# 初稿0.1.0

Schedule from MS Project, 2018-09-18 to 2019-01-11.

## Calendars

- 标准: Mon-Fri 08:00-12:00, 13:00-17:00; Sat-Sun off. Exceptions (off unless hours are given): 2018-09-01 to 2018-10-07 08:00-12:00, 13:00-17:00, 2018-10-13 to 2019-08-08 08:00-12:00, 13:00-17:00.

## Resources

| Resource |
| --- |
| 沈启航 |
| 叶柏成 |
| 骆佳俊 |
| 杨以恒 |
| 徐哲远 |
| 沈 |
| l骆 |
| d |

## Schedule

| ID | WBS | Task | Type | Duration | Start | Finish | Predecessors | Total slack | Resources | Work |
| --- | --- | --- | --- | --- | --- | --- | --- | --- | --- | --- |
| 1 | 1 | **项目准备** |  | 20d | 2018-09-18 | 2018-10-07 |  | 0d |  | 112.67h |
| 2 | 1.1 | 人员召集 | manual | 1h | 2018-09-18 | 2018-09-18 |  |  | 骆佳俊; 沈启航; 徐哲远; 杨以恒; 叶柏成 | 0.25h |
| 3 | 1.2 | 课题选定 | manual | 1h | 2018-09-23 | 2018-09-23 |  |  | 沈启航 | 1h |
| 4 | 1.3 | 资源申请与完善 | manual | 2h | 2018-09-18 | 2018-09-18 |  |  | 叶柏成 | 0.25h |
| 5 | 1.4 | 软硬件环境落实 | manual | 15d | 2018-09-23 | 2018-10-07 |  |  | 叶柏成 | 111.04h |
| 6 | 1.5 | 项目起订 | milestone, manual | 1h | 2018-09-23 | 2018-09-23 |  |  | 沈启航 | 0.12h |
| 7 | 2 | 小组第一次例会 | manual | 1h | 2018-09-28 | 2018-09-28 |  |  | 骆佳俊; 沈启航; 徐哲远; 杨以恒; 叶柏成 | 0.03h |
| 8 | 3 | **软件项目工程计划** |  | 7d | 2018-09-24 | 2018-09-30 | 1 |  |  | 28.73h |
| 9 | 3.1 | 寻找模板 | manual | 1h | 2018-09-24 | 2018-09-24 |  |  | 骆佳俊 | 0.03h |
| 10 | 3.2 | **计划攥写-初步** |  | 3d | 2018-09-28 | 2018-09-30 | 7 |  | 骆佳俊 [20%]; 沈启航 [20%]; 徐哲远 [20%]; 杨以恒 [20%]; 叶柏成 [20%] | 24.21h |
| 11 | 3.2.1 | 人力资源管理计划&采购管理计划 | manual | 1h | 2018-09-28 | 2018-09-28 |  |  | 沈启航 | 0.04h |
| 12 | 3.2.2 | 项目概述&风险管理计划 | manual | 1h | 2018-09-28 | 2018-09-28 |  |  | 杨以恒 | 0.04h |
| 13 | 3.2.3 | 引言&沟通管理手册 | manual | 1h | 2018-09-28 | 2018-09-28 |  |  | 叶柏成 | 0.04h |
| 14 | 3.2.4 | 实施计划&配置管理系统 | manual | 1h | 2018-09-28 | 2018-09-28 |  |  | 骆佳俊 | 0.04h |
| 15 | 3.2.5 | 支持条件&成本管理计划 | manual | 1h | 2018-09-28 | 2018-09-28 |  |  | 徐哲远 | 0.04h |
| 16 | 3.3 | **计划更新修改** |  | 0.25d | 2018-09-28 | 2018-09-28 |  | 0d | 骆佳俊 [20%]; 沈启航 [20%]; 徐哲远 [20%]; 杨以恒 [20%]; 叶柏成 [20%] | 4.5h |
| 17 | 3.3.1 | 人力资源管理计划&采购管理计划 | manual | 2h | 2018-09-28 | 2018-09-28 |  |  | 沈启航 | 1.06h |
| 18 | 3.3.2 | 项目概述&风险管理计划 | manual | 2h | 2018-09-28 | 2018-09-28 |  |  | 杨以恒 | 1.06h |
| 19 | 3.3.3 | 引言&沟通管理手册 | manual | 2h | 2018-09-28 | 2018-09-28 |  |  | 叶柏成 | 0.12h |
| 20 | 3.3.4 | 实施计划&配置管理系统 | manual | 2h | 2018-09-28 | 2018-09-28 |  |  | 骆佳俊 | 0.12h |
| 21 | 3.3.5 | 支持条件&成本管理计划 | manual | 2h | 2018-09-28 | 2018-09-28 |  |  | 徐哲远 | 0.12h |
| 22 | 4 | **项目可行性报告** |  | 14d | 2018-10-01 | 2018-10-14 |  | 0d | 骆佳俊 [20%]; 沈启航 [20%]; 徐哲远 [20%]; 杨以恒 [20%]; 叶柏成 [20%] | 720.5h |
| 23 | 4.1 | 收集资料 | manual | 1h | 2018-10-10 | 2018-10-10 |  |  | 骆佳俊; 沈启航; 徐哲远; 杨以恒; 叶柏成 | 0.12h |
| 24 | 4.2 | 市场调研 | manual | 2h | 2018-10-11 | 2018-10-11 |  |  | 沈启航 | 0.5h |

| ID | WBS | Task | Type | Duration | Start | Finish | Predecessors | Total slack | Resources | Work |
| --- | --- | --- | --- | --- | --- | --- | --- | --- | --- | --- |
| 25 | 4.3 | **撰写可行性报告** |  | 7d | 2018-10-01 | 2018-10-07 | 23 |  | 骆佳俊; 沈启航; 徐哲远; 杨以恒; 叶柏成 | 280.88h |
| 26 | 4.3.1 | 引言 | manual | 1h | 2018-10-01 | 2018-10-01 |  |  | 骆佳俊 | 0.12h |
| 27 | 4.3.2 | 可行性研究的前提 | manual | 1h | 2018-10-01 | 2018-10-01 |  |  | 沈启航 | 0.12h |
| 28 | 4.3.3 | 技术可行性 | manual | 1h | 2018-10-01 | 2018-10-01 |  |  | 徐哲远 | 0.12h |
| 29 | 4.3.4 | 法律可行性 | manual | 1h | 2018-10-01 | 2018-10-01 |  |  | 杨以恒 | 0.12h |
| 30 | 4.3.5 | 用户操作可行性 | manual | 1h | 2018-10-01 | 2018-10-01 |  |  | 叶柏成 | 0.12h |
| 31 | 4.3.6 | 项目干系人 | manual | 1h | 2018-10-01 | 2018-10-01 |  |  | 徐哲远 | 0.12h |
| 32 | 4.3.7 | 项目风险 | manual | 1h | 2018-10-01 | 2018-10-01 |  |  | 骆佳俊 | 0.12h |
| 33 | 4.4 | **补充完善可行性计划** |  | 8d | 2018-10-07 | 2018-10-14 | 25 |  | 骆佳俊; 沈启航; 徐哲远; 杨以恒; 叶柏成 | 327h |
| 34 | 4.4.1 | 引言 | manual | 1d | 2018-10-10 | 2018-10-10 |  |  | 骆佳俊 | 1h |
| 35 | 4.4.2 | 可行性研究的前提 | manual | 1d | 2018-10-10 | 2018-10-10 |  |  | 沈启航 | 1h |
| 36 | 4.4.3 | 技术可行性 | manual | 1d | 2018-10-10 | 2018-10-10 |  |  | 徐哲远 | 1h |
| 37 | 4.4.4 | 法律可行性 | manual | 1d | 2018-10-10 | 2018-10-10 |  |  | 杨以恒 | 1h |
| 38 | 4.4.5 | 用户操作可行性 | manual | 1d | 2018-10-10 | 2018-10-10 |  |  | 叶柏成 | 1h |
| 39 | 4.4.6 | 项目干系人 | manual | 1d | 2018-10-10 | 2018-10-10 |  |  | 徐哲远 | 1h |
| 40 | 4.4.7 | 项目风险 | manual | 1d | 2018-10-10 | 2018-10-10 |  |  | 骆佳俊 | 1h |
| 41 | 5 | 小组第二次会议 | manual | 1d | 2018-10-09 | 2018-10-09 | 7 |  | 骆佳俊; 沈启航; 徐哲远; 杨以恒; 叶柏成 | 40h |
| 42 | 6 | **UML概述翻转PPT** |  | 11d | 2018-10-09 | 2018-10-19 |  | 0d | 骆佳俊 [10%]; 沈启航 [60%]; 徐哲远 [10%]; 杨以恒 [10%]; 叶柏成 [10%] | 270h |
| 43 | 6.1 | 收集资料 | manual | 4d | 2018-10-09 | 2018-10-12 |  |  | 骆佳俊; 沈启航; 徐哲远; 杨以恒; 叶柏成 | 4h |
| 44 | 6.2 | **PPT的制作** |  | 4d | 2018-10-10 | 2018-10-13 |  |  | 骆佳俊; 沈启航; 徐哲远; 杨以恒; 叶柏成 | 174h |
| 45 | 6.2.1 | UML概念 | manual | 4d | 2018-10-10 | 2018-10-13 |  |  | 徐哲远 | 2h |
| 46 | 6.2.2 | UML诞生历史、特点 | manual | 4d | 2018-10-10 | 2018-10-13 |  |  | 杨以恒 | 2h |
| 47 | 6.2.3 | UML结构、及PPT整理 | manual | 4d | 2018-10-10 | 2018-10-13 |  |  | 沈启航 | 2h |
| 48 | 6.2.4 | UML视图 | manual | 4d | 2018-10-10 | 2018-10-13 |  |  | 叶柏成 | 4h |
| 49 | 6.2.5 | UML图 | manual | 4d | 2018-10-10 | 2018-10-13 |  |  | 骆佳俊 | 4h |

| ID | WBS | Task | Type | Duration | Start | Finish | Predecessors | Total slack | Resources | Work |
| --- | --- | --- | --- | --- | --- | --- | --- | --- | --- | --- |
| 50 | 6.3 | **PPT的更新** |  | 3d | 2018-10-17 | 2018-10-19 |  |  |  | 4h |
| 51 | 6.3.1 | 修改视图、增加类图 | manual | 3d | 2018-10-17 | 2018-10-19 |  |  | 骆佳俊 | 3h |
| 52 | 6.3.2 | 修改文本 | manual | 3d | 2018-10-17 | 2018-10-19 |  |  | 沈启航 | 1h |
| 53 | 7 | 小组第三次会议 | manual | 1d | 2018-10-16 | 2018-10-16 | 41 |  | 骆佳俊; 沈启航; 徐哲远; 杨以恒; 叶柏成 | 1h |
| 54 | 8 | **项目章程** |  | 5d | 2018-10-17 | 2018-10-21 | 22 |  | 徐哲远 | 42h |
| 55 | 8.1 | 收集资料 | manual | 2d | 2018-10-17 | 2018-10-18 |  |  | 徐哲远 | 1h |
| 56 | 8.2 | 项目章程的撰写 | manual | 4d | 2018-10-18 | 2018-10-21 |  |  | 徐哲远 | 1h |
| 57 | 9 | **项目总体性计划** |  | 5d | 2018-10-17 | 2018-10-21 | 22 |  | 骆佳俊 [20%]; 沈启航 [20%]; 徐哲远 [20%]; 杨以恒 [20%]; 叶柏成 [20%] | 250h |
| 58 | 9.1 | 收集资料 | manual | 2d | 2018-10-17 | 2018-10-18 |  |  | 骆佳俊; 沈启航; 徐哲远; 杨以恒; 叶柏成 | 5h |
| 59 | 9.2 | **项目总体性计划的攥写** |  | 5d | 2018-10-17 | 2018-10-21 |  |  | 骆佳俊; 沈启航; 徐哲远; 杨以恒; 叶柏成 | 205h |
| 60 | 9.2.1 | 引言 | manual | 1d | 2018-10-20 | 2018-10-20 |  |  | 杨以恒 | 1h |
| 61 | 9.2.2 | 项目概述 | manual | 1d | 2018-10-20 | 2018-10-20 |  |  | 骆佳俊 | 1h |
| 62 | 9.2.3 | 实施计划 | manual | 1d | 2018-10-20 | 2018-10-20 |  |  | 沈启航 | 1h |
| 63 | 9.2.4 | 支持条件 | manual | 1d | 2018-10-20 | 2018-10-20 |  |  | 徐哲远 | 1h |
| 64 | 9.2.5 | 专辑要点计划 | manual | 1d | 2018-10-20 | 2018-10-20 |  |  | 叶柏成 | 1h |
| 65 | 10 | **需求工程计划-初步** |  | 5d | 2018-10-17 | 2018-10-21 | 22 |  | 骆佳俊 [20%]; 沈启航 [20%]; 徐哲远 [20%]; 杨以恒 [20%]; 叶柏成 [20%] | 50h |
| 66 | 10.1 | 收集资料 | manual | 2d | 2018-10-17 | 2018-10-18 |  |  | 骆佳俊; 沈启航; 徐哲远; 杨以恒; 叶柏成 | 5h |
| 67 | 10.2 | 攥写计划 | manual | 3d | 2018-10-19 | 2018-10-21 |  |  | 骆佳俊; 沈启航; 徐哲远; 杨以恒; 叶柏成 | 5h |
| 68 | 11 | **Rational Software Architect翻转课堂** |  | 10d | 2018-10-17 | 2018-10-26 | 42 | 0d | 骆佳俊 [20%]; 沈启航 [20%]; 徐哲远 [20%]; 杨以恒 [20%]; 叶柏成 [20%] | 280.2h |
| 69 | 11.1 | 收集资料、约定模板字体 | manual | 1d | 2018-10-17 | 2018-10-17 |  |  | 杨以恒 | 0.2h |
| 70 | 11.2 | **制作PPT** |  | 2d | 2018-10-19 | 2018-10-21 |  | 0d | 骆佳俊; 沈启航; 徐哲远; 杨以恒; 叶柏成 | 200h |
| 71 | 11.2.1 | 任务1 | manual | 3d | 2018-10-19 | 2018-10-21 |  |  | 骆佳俊 | 24h |
| 72 | 11.2.2 | 任务2 | manual | 3d | 2018-10-19 | 2018-10-21 |  |  | 沈启航 | 24h |
| 73 | 11.2.3 | 任务3 | manual | 3d | 2018-10-19 | 2018-10-21 |  |  | 徐哲远 | 24h |
| 74 | 11.2.4 | 任务4 | manual | 3d | 2018-10-19 | 2018-10-21 |  |  | 杨以恒 | 24h |
| 75 | 11.2.5 | 任务5 | manual | 3d | 2018-10-19 | 2018-10-21 |  |  | 叶柏成 | 24h |

| ID | WBS | Task | Type | Duration | Start | Finish | Predecessors |
| --- | --- | --- | --- | --- | --- | --- | --- |
| 76 | 11.3 | **修改更新PPT** |  | 2d | 2018-10-25 | 2018-10-26 |  |
| 77 | 11.3.1 | 任务1 | manual | 1d? | 2018-10-25 | 2018-10-26 |  |
| 78 | 11.3.2 | 任务2 | manual | 1d? | 2018-10-25 | 2018-10-26 |  |
| 79 | 12 | **QA计划** |  | 5d | 2018-10-24 | 2018-10-28 | 54, 57, 65 |
| 80 | 12.1 | 收集资料 | manual | 1d? | 2018-10-24 | 2018-10-24 |  |
| 81 | 12.2 | 攥写计划 | manual | 1d? | 2018-10-24 | 2018-10-24 |  |
| 82 | 13 | 小组第四次会议 | manual | 1d | 2018-10-23 | 2018-10-23 |  |
| 83 | 14 | **软件工程计划修改以及评审** |  | 4d | 2018-11-01 | 2018-11-04 | 79 |
| 84 | 14.1 | 修改 | manual | 1d? | 2018-11-01 | 2018-11-01 |  |
| 85 | 15 | **软件工程需求规格说明书** |  | 5d | 2018-11-28 | 2018-12-02 | 83 |
| 86 | 15.1 | 收集资料 | manual | 1d? | 2018-11-28 | 2018-11-28 |  |
| 87 | 16 | UML基础I 翻转课堂 | manual | 5d | 2018-10-22 | 2018-10-26 | 68 |
| 88 | 17 | **软件需求规格说明书修改及评审** |  | 4d | 2018-12-06 | 2018-12-09 | 85 |
| 89 | 17.1 | 修改 | manual | 1d? | 2018-12-06 | 2018-12-06 |  |
| 90 | 18 | 小组第五次例会 | manual | 1d | 2018-10-30 | 2018-10-30 |  |
| 91 | 19 | UML II翻转课堂：界面原型 | manual | 7d | 2018-10-27 | 2018-11-02 | 87 |
| 92 | 20 | 小组第六次例会 | manual | 1d | 2018-11-06 | 2018-11-06 |  |
| 93 | 21 | 小组第七次例会 | manual | 1d | 2018-11-13 | 2018-11-13 |  |
| 94 | 22 | 小组第八次例会 | manual | 1d | 2018-11-20 | 2018-11-20 |  |
| 95 | 23 | 小组第九次例会 | manual | 1d | 2018-11-27 | 2018-11-27 |  |
| 96 | 24 | SRS需求规格说明 | manual | 7d | 2018-11-23 | 2018-11-29 |  |
| 97 | 25 | 小组第十次例会 | manual | 1d | 2018-12-04 | 2018-12-04 |  |
| 98 | 26 | UML 基础III翻转课堂 | manual | 5d | 2018-11-03 | 2018-11-07 | 91 |
| 99 | 27 | 软件需求变更文档 | manual | 7d | 2018-11-30 | 2018-12-06 |  |
| 100 | 28 | 小组第十一次例会 | manual | 1d | 2018-12-11 | 2018-12-11 |  |
| 101 | 29 | UML基础IIII 翻转课堂 | manual | 7d | 2018-11-08 | 2018-11-14 | 98 |
| 102 | 30 | 软件需求变更文档修改和评审 | manual | 7d | 2018-12-07 | 2018-12-13 |  |
| 103 | 31 | 小组第十二次例会 | manual | 1d | 2018-12-18 | 2018-12-18 |  |
| 104 | 32 | 软件需求变更文档 | manual | 7d | 2018-12-14 | 2018-12-20 |  |

| ID | WBS | Task | Type | Duration | Start | Finish | Predecessors |
| --- | --- | --- | --- | --- | --- | --- | --- |
| 105 | 33 | **系统设计与实现计划** |  | 4d | 2018-12-27 | 2018-12-30 | 88 |
| 106 | 33.1 | 收集资料 | manual | 1d | 2018-12-27 | 2018-12-27 |  |
| 107 | 34 | 小组第十三次例会 | manual | 1d | 2018-12-25 | 2018-12-25 |  |
| 108 | 35 | 文档改进 | manual | 7d | 2018-12-21 | 2018-12-27 |  |
| 109 | 36 | 小组第十四周例会 | manual | 1d | 2019-01-08 | 2019-01-08 |  |
| 110 | 37 | **软件概要说明设计** |  | 4d | 2018-12-31 | 2019-01-03 | 105 |
| 111 | 37.1 | 收集资料 | manual | 1d? | 2018-12-31 | 2018-12-31 |  |
| 112 | 38 | **测试计划** |  | 4d | 2019-01-04 | 2019-01-07 | 110 |
| 113 | 38.1 | 收集资料 | manual | 1d? | 2019-01-04 | 2019-01-04 |  |
| 114 | 39 | **安装部署计划** |  | 4d | 2019-01-04 | 2019-01-07 | 110 |
| 115 | 39.1 | 收集资料 | manual | 1d? | 2019-01-04 | 2019-01-04 |  |
| 116 | 40 | **培训计划** |  | 4d | 2019-01-04 | 2019-01-07 | 110 |
| 117 | 40.1 | 收集资料 | manual | 1d? | 2019-01-04 | 2019-01-04 |  |
| 118 | 41 | **系统维护计划** |  | 4d | 2019-01-04 | 2019-01-07 | 110 |
| 119 | 41.1 | 收集资料 | manual | 1d? | 2019-01-04 | 2019-01-04 |  |
| 120 | 42 | 小组第十五周例会 | manual | 1d | 2019-01-08 | 2019-01-08 |  |
| 121 | 43 | 项目总结报告 | manual | 4d | 2019-01-08 | 2019-01-11 | 112, 114, 116, 118 |
